# Сетевая модель проекта

Schedule from MS Project, 2015-02-01 to 2015-05-20, costs in р..

## Calendars

- Standard: Mon-Fri 08:00-12:00, 13:00-17:00; Sat-Sun off. Exceptions (off unless hours are given): 2015-02-23 (23 февраля), 2015-03-07 to 2015-03-09 (8 марта), 2015-05-01 (Праздник весны и труда), 2015-05-09 to 2015-05-11 (День победы).

## Resources

| Resource | Rate | Cost per use |
| --- | --- | --- |
| Ведущий программист | 500 |  |
| Программист | 468.75 |  |
| Моноблок Lenovo IdeaCentre B50-30 1 |  | 48900 |
| Моноблок Lenovo IdeaCentre B50-30 2 |  | 48900 |
| Отчисления на заработную плату |  | 165300 |
| Накладные расходы |  | 330600 |
| Офис на Партизанской |  | 39200 |

## Schedule

| ID | WBS | Task | Type | Duration | Start | Finish | Predecessors | Total slack | Resources | Work | Cost |
| --- | --- | --- | --- | --- | --- | --- | --- | --- | --- | --- | --- |
| 1 | 1 | **Система построения велосипденых маршрутов** |  | 74d | 2015-02-01 | 2015-05-20 |  | 0d |  | 1136h | 1,183,900 |
| 2 | 1.1 | Начало проекта | milestone | 0h | 2015-02-01 | 2015-02-01 |  | 0d | Моноблок Lenovo IdeaCentre B50-30 1; Моноблок Lenovo IdeaCentre B50-30 2; Отчисления на заработную плату; Накладные расходы; Офис на Партизанской |  | 632,900 |
| 3 | 1.2 | **Анализ и проектирование** |  | 26d | 2015-02-02 | 2015-03-11 |  | 0d |  | 376h | 182,750 |
| 4 | 1.2.1 | Анализ предметной области |  | 72h | 2015-02-02 | 2015-02-12 | 2 | 0d | Ведущий программист | 72h | 36,000 |
| 5 | 1.2.2 | Выбор средств реализации работы с картой дорог |  | 32h | 2015-02-02 | 2015-02-05 | 2 | 22d | Программист | 32h | 15,000 |
| 6 | 1.2.3 | Построение архитектуры |  | 64h | 2015-02-13 | 2015-02-25 | 4 | 0d | Ведущий программист; Программист | 128h | 62,000 |
| 7 | 1.2.4 | Проектирование и наполнение баз данных |  | 72h | 2015-02-26 | 2015-03-11 | 6 | 0d | Ведущий программист; Программист | 144h | 69,750 |
| 8 | 1.3 | **Программирование** |  | 18d | 2015-03-12 | 2015-04-06 | 3 | 0d |  | 288h | 139,500 |
| 9 | 1.3.1 | Реализация построения маршрутов |  | 56h | 2015-03-12 | 2015-03-20 |  | 0d | Ведущий программист; Программист | 112h | 54,250 |
| 10 | 1.3.2 | Реализация отображения маршрутов на карте |  | 48h | 2015-03-23 | 2015-03-30 | 9 | 0d | Ведущий программист; Программист | 96h | 46,500 |
| 11 | 1.3.3 | Реализация пользовательского интерфейса |  | 24h | 2015-03-31 | 2015-04-02 | 10 | 0d | Ведущий программист; Программист | 48h | 23,250 |
| 12 | 1.3.4 | Объединение компонентов в единую систему |  | 16h | 2015-04-03 | 2015-04-06 | 11 | 0d | Ведущий программист; Программист | 32h | 15,500 |
| 13 | 1.4 | **Тестирование и написание документации** |  | 24d | 2015-04-07 | 2015-05-12 | 12 | 0d |  | 384h | 186,000 |
| 14 | 1.4.1 | Тестирование и отладка |  | 152h | 2015-04-07 | 2015-05-04 |  | 0d | Ведущий программист; Программист | 304h | 147,250 |
| 15 | 1.4.2 | Написание документации |  | 40h | 2015-05-05 | 2015-05-12 | 14 | 0d | Ведущий программист; Программист | 80h | 38,750 |
| 16 | 1.5 | **Внедрение** |  | 6d | 2015-05-13 | 2015-05-20 | 13 | 0d |  | 88h | 42,750 |
| 17 | 1.5.1 | Развертывание приложения на сервере |  | 8h | 2015-05-13 | 2015-05-13 |  | 0d | Ведущий программист | 8h | 4,000 |
| 18 | 1.5.2 | Опытная эксплуатация |  | 40h | 2015-05-14 | 2015-05-20 | 17 | 0d | Ведущий программист; Программист | 80h | 38,750 |
| 19 | 1.6 | Окночание проекта | milestone | 0h | 2015-05-20 | 2015-05-20 | 16 | 0d |  |  |  |
